Schedule from MS Project, 2019-06-03 to 2019-11-27, costs in €.

## Calendars

- Intranet_KlinikIT: Mon-Fri 08:00-12:00, 13:00-17:00; Sat-Sun off. Exceptions (off unless hours are given): 2019-10-03 (Tag der deutschen Einheit), 2019-10-31 (Reformationstag).

## Resources

| Resource | Group | Rate |
| --- | --- | --- |
| Lukas Schmidt | SC - Projektleiter | 156.25 |
| Robin Behrendt | SE - Teamleiter Entwicklung / Scrum Master | 143.75 |
| Leon König | E - Entwickler | 100 |
| Leon Kuß | E - Teamleiter Test | 100 |
| Gerrit Peitz | E - Entwickler | 100 |
| Luca Siekmann | E - Entwickler | 100 |
| Theo Test | E - Tester | 100 |
| Ina Integration | I - Systemintegrator | 93.75 |
| Anna Lyse | C - Business Analyst | 112.5 |
| Andreas Auswertung | C - Business Analyst | 112.5 |
| Tobias Training | C - Coach | 112.5 |
| Arthur Architektur | C - Software Architekt | 112.5 |
| Dennis Design | E - Software Designer | 100 |

## Schedule

| ID | WBS | Task | Type | Duration | Start | Finish | Predecessors | Total slack | Free slack | Constraint | Resources | Work | Cost |
| --- | --- | --- | --- | --- | --- | --- | --- | --- | --- | --- | --- | --- | --- |
| 1 | 1 | **Projekt "Intranet für die KlinikIT"** |  | 126d | 2019-06-03 08:00 | 2019-11-27 17:00 |  | 0d |  |  |  | 2658h | 300,000 |
| 2 | 1.1 | Projektstart | milestone | 0d | 2019-06-03 08:00 | 2019-06-03 08:00 |  | 0d |  | start no earlier than 2019-06-03 08:00 |  |  |  |
| 3 | 1.2 | Projektmanagement |  | 124d | 2019-06-03 08:00 | 2019-11-27 17:00 | 2 | 0d |  |  | Lukas Schmidt [12.5%] | 124h | 19,375 |
| 4 | 1.3 | **Analysephase** |  | 10d | 2019-06-03 08:00 | 2019-06-14 17:00 | 2 | 0d |  |  |  | 140h | 15,650 |
| 5 | 1.3.1 | Ist-Analyse durchführen |  | 5d | 2019-06-03 08:00 | 2019-06-07 17:00 | 2SS | 0d |  |  | Anna Lyse; Gerrit Peitz; Luca Siekmann; Robin Behrendt; Leon König | 102h | 11,375 |
| 6 | 1.3.2 | Anforderungen erheben |  | 5d | 2019-06-10 08:00 | 2019-06-14 17:00 | 5 | 0d |  |  | Anna Lyse | 38h | 4,275 |
| 7 | 1.4 | **Konzeptionsphase** |  | 9d | 2019-06-17 08:00 | 2019-06-27 17:00 | 4 | 0d |  |  |  | 86h | 9,900 |
| 8 | 1.4.1 | Grobkonzept vervollständigen |  | 2d | 2019-06-17 08:00 | 2019-06-18 17:00 | 5, 6 | 0d |  |  | Arthur Architektur | 16h | 1,800 |
| 9 | 1.4.2 | Feinkonzept erstellen |  | 5d | 2019-06-19 08:00 | 2019-06-25 17:00 | 8 | 0d |  |  | Dennis Design | 38h | 3,800 |
| 10 | 1.4.3 | Berechtigungskonzept erstellen |  | 2d | 2019-06-19 08:00 | 2019-06-20 17:00 | 8 | 3d |  |  | Anna Lyse | 16h | 1,800 |
| 11 | 1.4.4 | Product-Backlog anlegen |  | 2d | 2019-06-26 08:00 | 2019-06-27 17:00 | 9, 10 | 0d |  |  | Lukas Schmidt | 16h | 2,500 |
| 12 | 1.5 | **Realisierungsphase** |  | 76.5d | 2019-07-01 08:00 | 2019-10-16 12:00 | 7FS+1d | 0d |  |  |  | 2308h | 255,075 |
| 13 | 1.5.1 | **Entwicklungssprints** |  | 69d | 2019-07-01 08:00 | 2019-10-04 17:00 | 7FS+1d | 0d |  |  |  | 2234h | 247,150 |
| 14 | 1.5.1.1 | **Sprint 1** |  | 10d | 2019-07-01 08:00 | 2019-07-12 17:00 | 7FS+1d | 0d |  |  |  | 336h | 37,262.5 |
| 15 | 1.5.1.1.1 | Sprint Planning 1 |  | 0.5d | 2019-07-01 08:00 | 2019-07-01 12:00 | 7FS+1d | 0d |  |  | Lukas Schmidt; Leon König; Leon Kuß; Luca Siekmann; Robin Behrendt; Gerrit Peitz | 20h | 2,287.5 |
| 16 | 1.5.1.1.2 | Kernsystem implementieren |  | 8d | 2019-07-01 13:00 | 2019-07-11 12:00 | 15 | 0.5d | 0d |  | Robin Behrendt; Gerrit Peitz; Leon König; Luca Siekmann | 240h | 26,625 |
| 17 | 1.5.1.1.3 | Test vorbereiten 1 |  | 1.5d | 2019-07-01 13:00 | 2019-07-02 17:00 | 15 | 8d |  |  | Theo Test; Leon Kuß | 24h | 2,400 |
| 18 | 1.5.1.1.4 | Refinement 1 |  | 0.5d | 2019-07-08 08:00 | 2019-07-08 12:00 | 15SS+5d | 4.5d |  |  | Leon König; Luca Siekmann; Lukas Schmidt; Robin Behrendt; Gerrit Peitz | 18h | 2,087.5 |
| 19 | 1.5.1.1.5 | Betriebshandbuch erstellen 1 |  | 1d | 2019-07-11 13:00 | 2019-07-12 12:00 | 16 | 0.5d |  |  | Robin Behrendt; Gerrit Peitz; Leon König; Luca Siekmann | 16h | 1,775 |
| 20 | 1.5.1.1.6 | Sprint Review & Retrospektive 1 |  | 0.5d | 2019-07-12 13:00 | 2019-07-12 17:00 | 15SS+9.5d | 0d |  |  | Lukas Schmidt; Leon König; Luca Siekmann; Robin Behrendt; Gerrit Peitz | 18h | 2,087.5 |
| 21 | 1.5.1.2 | **Sprint 2** |  | 10d | 2019-07-15 08:00 | 2019-07-26 17:00 | 14 | 0d |  |  |  | 326h | 36,312.5 |
| 22 | 1.5.1.2.1 | Sprint Planning 2 |  | 0.5d | 2019-07-15 08:00 | 2019-07-15 12:00 | 14 | 0d |  |  | Lukas Schmidt; Leon König; Leon Kuß; Robin Behrendt; Gerrit Peitz | 16h | 1,887.5 |
| 23 | 1.5.1.2.2 | Prozesse implementieren 1 |  | 8d | 2019-07-15 13:00 | 2019-07-25 12:00 | 22 | 0.5d | 0d |  | Robin Behrendt; Gerrit Peitz; Leon König; Luca Siekmann | 198h | 22,425 |
| 24 | 1.5.1.2.3 | Test durchführen 1 |  | 1.5d | 2019-07-15 08:00 | 2019-07-16 12:00 | 17 | 1.5d | 0d |  | Theo Test; Leon Kuß | 12h | 1,200 |
| 25 | 1.5.1.2.4 | Test vorbereiten 2 |  | 2.5d | 2019-07-16 13:00 | 2019-07-18 17:00 | 24 | 6d |  |  | Theo Test [80%]; Leon Kuß | 24h | 2,400 |
| 26 | 1.5.1.2.5 | Fehler beheben 1 |  | 1d | 2019-07-17 08:00 | 2019-07-17 17:00 | 24FS+0.5d | 1.5d | 0d |  | Gerrit Peitz [108.3%] | 8h | 800 |
| 27 | 1.5.1.2.6 | Software installieren 1 |  | 0.5d | 2019-07-18 08:00 | 2019-07-18 12:00 | 26 | 1.5d | 0d |  | Ina Integration | 4h | 375 |
| 28 | 1.5.1.2.7 | Nutzerakzeptanzumfrage durchführen 1 |  | 0.5d | 2019-07-22 13:00 | 2019-07-22 17:00 | 27FS+2d | 1.5d | 0d |  | Andreas Auswertung | 4h | 450 |
| 29 | 1.5.1.2.8 | Nutzerakzeptanzumfrage auswerten 1 |  | 0.5d | 2019-07-25 08:00 | 2019-07-25 12:00 | 28FS+2d | 1.5d |  |  | Andreas Auswertung | 4h | 450 |
| 30 | 1.5.1.2.9 | Performanceziele überprüfen 1 |  | 0.5d | 2019-07-18 13:00 | 2019-07-18 17:00 | 27 | 6d |  |  | Ina Integration | 4h | 375 |
| 31 | 1.5.1.2.10 | Refinement 2 |  | 0.5d | 2019-07-22 08:00 | 2019-07-22 12:00 | 22SS+5d | 4.5d |  |  | Leon König; Luca Siekmann; Lukas Schmidt; Robin Behrendt; Gerrit Peitz | 18h | 2,087.5 |
| 32 | 1.5.1.2.11 | Betriebshandbuch erstellen 2 |  | 1d | 2019-07-25 13:00 | 2019-07-26 12:00 | 23 | 0.5d |  |  | Robin Behrendt [63.6%]; Gerrit Peitz [63.6%]; Leon König [63.6%]; Luca Siekmann [63.6%] | 16h | 1,775 |
| 33 | 1.5.1.2.12 | Sprint Review & Retrospektive 2 |  | 0.5d | 2019-07-26 13:00 | 2019-07-26 17:00 | 22SS+9.5d | 0d |  |  | Lukas Schmidt; Leon König; Luca Siekmann; Robin Behrendt; Gerrit Peitz | 18h | 2,087.5 |

Notes:
- 14: FERTIG
- 15: Feste Dauer
- 16: Feste Einheiten
- 17: Feste Arbeit
- 18: Feste Dauer
- 19: Feste Einheiten
- 20: Feste Dauer
- 22: Feste Dauer
- 23: Feste Einheiten
- 24: Feste Arbeit
- 25: Feste Arbeit
- 26: Feste Arbeit
- 27: Feste Einheiten
- 28: Feste Arbeit
- 29: Feste Arbeit
- 30: Feste Arbeit
- 31: Feste Dauer
- 32: Feste Einheiten
- 33: Feste Dauer

| ID | WBS | Task | Duration | Start | Finish | Predecessors | Total slack | Free slack | Resources | Work | Cost |
| --- | --- | --- | --- | --- | --- | --- | --- | --- | --- | --- | --- |
| 34 | 1.5.1.3 | **Sprint 3** | 10d | 2019-07-29 08:00 | 2019-08-09 17:00 | 21 | 0d |  |  | 326h | 36,312.5 |
| 35 | 1.5.1.3.1 | Sprint Planning 3 | 0.5d | 2019-07-29 08:00 | 2019-07-29 12:00 | 21 | 0d |  | Gerrit Peitz; Leon König; Leon Kuß; Luca Siekmann; Lukas Schmidt; Robin Behrendt | 20h | 2,287.5 |
| 36 | 1.5.1.3.2 | Prozesse implementieren 2 | 8d | 2019-07-29 13:00 | 2019-08-08 12:00 | 35 | 0d |  | Gerrit Peitz; Leon König; Luca Siekmann; Robin Behrendt | 206h | 23,225 |
| 37 | 1.5.1.3.3 | Test durchführen 2 | 1.5d | 2019-07-29 08:00 | 2019-07-30 12:00 | 25 | 2d | 0d | Theo Test; Leon Kuß | 12h | 1,200 |
| 38 | 1.5.1.3.4 | Test vorbereiten 3 | 2.5d | 2019-07-30 13:00 | 2019-08-01 17:00 | 37 | 9.5d | 6d | Theo Test [80%]; Leon Kuß | 24h | 2,400 |
| 39 | 1.5.1.3.5 | Fehler beheben 2 | 1d | 2019-07-31 08:00 | 2019-07-31 17:00 | 37FS+0.5d | 2d | 0d | Leon König [200%] | 8h | 800 |
| 40 | 1.5.1.3.6 | Software installieren 2 | 0.5d | 2019-08-01 08:00 | 2019-08-01 12:00 | 39 | 5d | 0d | Ina Integration | 4h | 375 |
| 41 | 1.5.1.3.7 | Nutzerakzeptanzumfrage durchführen 2 | 0.5d | 2019-08-05 13:00 | 2019-08-05 17:00 | 40FS+2d | 5d | 0d | Andreas Auswertung | 4h | 450 |
| 42 | 1.5.1.3.8 | Nutzerakzeptanzumfrage auswerten 2 | 0.5d | 2019-08-08 08:00 | 2019-08-08 12:00 | 41FS+2d | 5d |  | Andreas Auswertung | 4h | 450 |
| 43 | 1.5.1.3.9 | Performanceziele überprüfen 2 | 0.5d | 2019-08-01 13:00 | 2019-08-01 17:00 | 40 | 9.5d |  | Ina Integration | 4h | 375 |
| 44 | 1.5.1.3.10 | Refinement 3 | 0.5d | 2019-08-05 08:00 | 2019-08-05 12:00 | 35SS+5d | 8d |  | Gerrit Peitz; Luca Siekmann; Lukas Schmidt; Robin Behrendt | 14h | 1,687.5 |
| 45 | 1.5.1.3.11 | Betriebshandbuch erstellen 3 | 1d | 2019-08-08 13:00 | 2019-08-09 12:00 | 36 | 4d |  | Gerrit Peitz; Luca Siekmann; Robin Behrendt | 12h | 1,375 |
| 46 | 1.5.1.3.12 | Sprint Review & Retrospektive 3 | 0.5d | 2019-08-09 13:00 | 2019-08-09 17:00 | 35SS+9.5d | 3.5d |  | Gerrit Peitz; Luca Siekmann; Lukas Schmidt; Robin Behrendt | 14h | 1,687.5 |
| 47 | 1.5.1.4 | **Sprint 4** | 10d | 2019-08-12 08:00 | 2019-08-23 17:00 | 34 | 3.5d | 0d |  | 326h | 36,312.5 |
| 48 | 1.5.1.4.1 | Sprint Planning 4 | 0.5d | 2019-08-12 08:00 | 2019-08-12 12:00 | 34 | 4.5d | 0d | Gerrit Peitz; Leon Kuß; Luca Siekmann; Lukas Schmidt; Robin Behrendt | 16h | 1,887.5 |
| 49 | 1.5.1.4.2 | Prozesse implementieren 3 | 4.5d | 2019-08-12 13:00 | 2019-08-16 17:00 | 48 | 5d | 0d | Gerrit Peitz; Luca Siekmann; Robin Behrendt | 94h | 10,887.5 |
| 50 | 1.5.1.4.3 | "Schmankerl" implementieren 1 | 3.5d | 2019-08-19 08:00 | 2019-08-22 12:00 | 48, 49 | 5d | 0d | Gerrit Peitz; Leon König; Luca Siekmann; Robin Behrendt | 104h | 11,537.5 |
| 51 | 1.5.1.4.4 | Test durchführen 3 | 1.5d | 2019-08-12 08:00 | 2019-08-13 12:00 | 38 | 3.5d | 0d | Theo Test [140%]; Leon Kuß | 12h | 1,200 |
| 52 | 1.5.1.4.5 | Test vorbereiten 4 | 2.5d | 2019-08-13 13:00 | 2019-08-15 17:00 | 51 | 10.5d | 6d | Theo Test; Leon Kuß | 24h | 2,400 |
| 53 | 1.5.1.4.6 | Fehler beheben 3 | 1d | 2019-08-14 08:00 | 2019-08-14 17:00 | 51FS+0.5d | 6d | 0d | Luca Siekmann | 8h | 800 |
| 54 | 1.5.1.4.7 | Software installieren 3 | 0.5d | 2019-08-15 08:00 | 2019-08-15 12:00 | 53 | 6d | 0d | Ina Integration | 4h | 375 |
| 55 | 1.5.1.4.8 | Nutzerakzeptanzumfrage durchführen 3 | 0.5d | 2019-08-19 13:00 | 2019-08-19 17:00 | 54FS+2d | 6d | 0d | Andreas Auswertung | 4h | 450 |
| 56 | 1.5.1.4.9 | Nutzerakzeptanzumfrage auswerten 3 | 0.5d | 2019-08-22 08:00 | 2019-08-22 12:00 | 55FS+2d | 6d |  | Andreas Auswertung | 4h | 450 |
| 57 | 1.5.1.4.10 | Performanceziele überprüfen 3 | 0.5d | 2019-08-15 13:00 | 2019-08-15 17:00 | 54 | 10.5d |  | Ina Integration | 4h | 375 |
| 58 | 1.5.1.4.11 | Refinement 4 | 0.5d | 2019-08-19 08:00 | 2019-08-19 12:00 | 48SS+5d | 9d |  | Gerrit Peitz; Leon König; Luca Siekmann; Robin Behrendt; Lukas Schmidt | 18h | 2,087.5 |
| 59 | 1.5.1.4.12 | Betriebshandbuch erstellen 4 | 1d | 2019-08-22 13:00 | 2019-08-23 12:00 | 50 | 5d |  | Gerrit Peitz; Leon König; Luca Siekmann; Robin Behrendt | 16h | 1,775 |
| 60 | 1.5.1.4.13 | Sprint Review & Retrospektive 4 | 0.5d | 2019-08-23 13:00 | 2019-08-23 17:00 | 48SS+9.5d | 4.5d |  | Gerrit Peitz; Leon König; Luca Siekmann; Lukas Schmidt; Robin Behrendt | 18h | 2,087.5 |

Notes:
- 35: Feste Dauer
- 36: Feste Einheiten
- 37: Feste Arbeit
- 38: Feste Arbeit
- 39: Feste Arbeit
- 40: Feste Einheiten
- 41: Feste Arbeit
- 42: Feste Arbeit
- 43: Feste Arbeit
- 44: Feste Dauer
- 45: Feste Einheiten
- 46: Feste Dauer
- 48: Feste Dauer
- 49: Feste Einheiten
- 51: Feste Arbeit
- 52: Feste Arbeit
- 53: Feste Arbeit
- 54: Feste Einheiten
- 55: Feste Arbeit
- 56: Feste Arbeit
- 57: Feste Arbeit
- 58: Feste Dauer
- 59: Feste Einheiten
- 60: Feste Dauer

| ID | WBS | Task | Duration | Start | Finish | Predecessors | Total slack | Free slack | Resources | Work | Cost |
| --- | --- | --- | --- | --- | --- | --- | --- | --- | --- | --- | --- |
| 61 | 1.5.1.5 | **Sprint 5** | 10d | 2019-08-26 08:00 | 2019-09-06 17:00 | 47 | 4.5d | 0d |  | 326h | 36,312.5 |
| 62 | 1.5.1.5.1 | Sprint Planning 5 | 0.5d | 2019-08-26 08:00 | 2019-08-26 12:00 | 47 | 4.5d | 0d | Gerrit Peitz; Leon König; Leon Kuß; Luca Siekmann; Lukas Schmidt; Robin Behrendt | 20h | 2,287.5 |
| 63 | 1.5.1.5.2 | "Schmankerl" implementieren 2 | 8d | 2019-08-26 13:00 | 2019-09-05 12:00 | 62 | 11.5d | 0d | Gerrit Peitz; Leon König; Luca Siekmann; Robin Behrendt | 206h | 23,225 |
| 64 | 1.5.1.5.3 | Test durchführen 4 | 1.5d | 2019-08-26 08:00 | 2019-08-27 12:00 | 52 | 20d | 0d | Theo Test; Leon Kuß | 12h | 1,200 |
| 65 | 1.5.1.5.4 | Test vorbereiten 5 | 2.5d | 2019-08-27 13:00 | 2019-08-29 17:00 | 64 | 24.5d | 6d | Theo Test; Leon Kuß | 24h | 2,400 |
| 66 | 1.5.1.5.5 | Fehler beheben 4 | 1d | 2019-08-28 08:00 | 2019-08-28 17:00 | 64FS+0.5d | 20d | 0d | Gerrit Peitz | 8h | 800 |
| 67 | 1.5.1.5.6 | Software installieren 4 | 0.5d | 2019-08-29 08:00 | 2019-08-29 12:00 | 66 | 20d | 0d | Ina Integration | 4h | 375 |
| 68 | 1.5.1.5.7 | Nutzerakzeptanzumfrage durchführen 4 | 0.5d | 2019-09-02 13:00 | 2019-09-02 17:00 | 67FS+2d | 20d | 0d | Andreas Auswertung | 4h | 450 |
| 69 | 1.5.1.5.8 | Nutzerakzeptanzumfrage auswerten 4 | 0.5d | 2019-09-05 08:00 | 2019-09-05 12:00 | 68FS+2d | 20d |  | Andreas Auswertung | 4h | 450 |
| 70 | 1.5.1.5.9 | Performanceziele überprüfen 4 | 0.5d | 2019-08-29 13:00 | 2019-08-29 17:00 | 67 | 24.5d |  | Ina Integration | 4h | 375 |
| 71 | 1.5.1.5.10 | Refinement 5 | 0.5d | 2019-08-30 17:00 | 2019-09-02 12:00 | 62SS+5d | 20.5d |  | Gerrit Peitz; Leon König; Luca Siekmann; Lukas Schmidt; Robin Behrendt | 14h | 1,687.5 |
| 72 | 1.5.1.5.11 | Betriebshandbuch erstellen 5 | 1d | 2019-09-05 13:00 | 2019-09-06 12:00 | 63 | 16.5d |  | Leon König; Luca Siekmann; Robin Behrendt | 12h | 1,375 |
| 73 | 1.5.1.5.12 | Sprint Review & Retrospektive 5 | 0.5d | 2019-09-06 12:00 | 2019-09-06 17:00 | 62SS+9.5d | 16d |  | Gerrit Peitz; Leon König; Luca Siekmann; Lukas Schmidt; Robin Behrendt | 14h | 1,687.5 |
| 74 | 1.5.1.6 | **Sprint 6** | 10d | 2019-09-09 08:00 | 2019-09-20 17:00 | 61 | 18.5d | 0d |  | 326h | 36,312.5 |
| 75 | 1.5.1.6.1 | Sprint Planning 6 | 0.5d | 2019-09-09 08:00 | 2019-09-09 12:00 | 61 | 18.5d | 0d | Leon König; Leon Kuß; Luca Siekmann; Lukas Schmidt; Robin Behrendt | 16h | 1,887.5 |
| 76 | 1.5.1.6.2 | Zusatzfunktionen implementieren 1 | 8d | 2019-09-09 13:00 | 2019-09-19 12:00 | 75 | 19d | 0d | Gerrit Peitz; Leon König; Luca Siekmann; Robin Behrendt | 198h | 22,425 |
| 77 | 1.5.1.6.3 | Test durchführen 5 | 1.5d | 2019-09-09 08:00 | 2019-09-10 12:00 | 65 | 20d | 0d | Theo Test; Leon Kuß | 12h | 1,200 |
| 78 | 1.5.1.6.4 | Test vorbereiten 6 | 2.5d | 2019-09-10 13:00 | 2019-09-12 17:00 | 77 | 24.5d | 6d | Theo Test [150%]; Leon Kuß [150%] | 24h | 2,400 |
| 79 | 1.5.1.6.5 | Fehler beheben 5 | 1d | 2019-09-11 08:00 | 2019-09-11 17:00 | 77FS+0.5d | 20d | 0d | Leon König | 8h | 800 |
| 80 | 1.5.1.6.6 | Software installieren 5 | 0.5d | 2019-09-12 08:00 | 2019-09-12 12:00 | 79 | 20d | 0d | Ina Integration | 4h | 375 |
| 81 | 1.5.1.6.7 | Nutzerakzeptanzumfrage durchführen 5 | 0.5d | 2019-09-16 13:00 | 2019-09-16 17:00 | 80FS+2d | 20d | 0d | Andreas Auswertung | 4h | 450 |
| 82 | 1.5.1.6.8 | Nutzerakzeptanzumfrage auswerten 5 | 0.5d | 2019-09-19 08:00 | 2019-09-19 12:00 | 81FS+2d | 20d |  | Andreas Auswertung | 4h | 450 |
| 83 | 1.5.1.6.9 | Performanceziele überprüfen 5 | 0.5d | 2019-09-12 13:00 | 2019-09-12 17:00 | 80 | 24.5d |  | Ina Integration | 4h | 375 |
| 84 | 1.5.1.6.10 | Refinement 6 | 0.5d | 2019-09-16 08:00 | 2019-09-16 12:00 | 75SS+5d | 23d |  | Gerrit Peitz; Leon König; Luca Siekmann; Lukas Schmidt; Robin Behrendt | 18h | 2,087.5 |
| 85 | 1.5.1.6.11 | Betriebshandbuch erstellen 6 | 1d | 2019-09-19 13:00 | 2019-09-20 12:00 | 76 | 19d |  | Gerrit Peitz; Leon König; Luca Siekmann; Robin Behrendt | 16h | 1,775 |
| 86 | 1.5.1.6.12 | Sprint Review & Retrospektive 6 | 0.5d | 2019-09-20 13:00 | 2019-09-20 17:00 | 75SS+9.5d | 18.5d |  | Gerrit Peitz; Leon König; Luca Siekmann; Lukas Schmidt; Robin Behrendt | 18h | 2,087.5 |

Notes:
- 62: Feste Dauer
- 63: Feste Einheiten
- 64: Feste Arbeit
- 65: Feste Arbeit
- 66: Feste Arbeit
- 67: Feste Einheiten
- 68: Feste Arbeit
- 69: Feste Arbeit
- 70: Feste Arbeit
- 71: Feste Dauer
- 72: Feste Einheiten
- 73: Feste Dauer
- 75: Feste Dauer
- 76: Feste Einheiten
- 77: Feste Arbeit
- 78: Feste Arbeit
- 79: Feste Arbeit
- 80: Feste Einheiten
- 81: Feste Arbeit
- 82: Feste Arbeit
- 83: Feste Arbeit
- 84: Feste Dauer
- 85: Feste Einheiten
- 86: Feste Dauer

| ID | WBS | Task | Duration | Start | Finish | Predecessors | Total slack | Free slack | Resources | Work | Cost |
| --- | --- | --- | --- | --- | --- | --- | --- | --- | --- | --- | --- |
| 87 | 1.5.1.7 | **Sprint 7** | 9d | 2019-09-23 08:00 | 2019-10-04 17:00 | 74 | 18.5d | 0d |  | 268h | 28,325 |
| 88 | 1.5.1.7.1 | Sprint Planning 7 | 0.5d | 2019-09-23 08:00 | 2019-09-23 12:00 | 74 | 18.5d | 0d | Gerrit Peitz; Leon König; Leon Kuß; Luca Siekmann; Lukas Schmidt | 16h | 1,712.5 |
| 89 | 1.5.1.7.2 | Zusatzfunktionen implementieren 2 | 7d | 2019-09-23 13:00 | 2019-10-02 12:00 | 88 | 19d | 0d | Gerrit Peitz; Leon König; Luca Siekmann; Robin Behrendt | 152h | 15,987.5 |
| 90 | 1.5.1.7.3 | Test durchführen 6 | 1.5d | 2019-09-23 08:00 | 2019-09-24 12:00 | 78 | 20d | 0d | Theo Test; Leon Kuß | 12h | 1,200 |
| 91 | 1.5.1.7.4 | Test vorbereiten 7 | 2.5d | 2019-09-24 13:00 | 2019-09-26 17:00 | 90 | 23.5d | 5d | Theo Test [150%]; Leon Kuß [150%] | 24h | 2,400 |
| 92 | 1.5.1.7.5 | Fehler beheben 6 | 1d | 2019-09-25 08:00 | 2019-09-25 17:00 | 90FS+0.5d | 20d | 0d | Luca Siekmann | 8h | 800 |
| 93 | 1.5.1.7.6 | Software installieren 6 | 0.5d | 2019-09-26 08:00 | 2019-09-26 12:00 | 92 | 20d | 0d | Ina Integration | 4h | 375 |
| 94 | 1.5.1.7.7 | Nutzerakzeptanzumfrage durchführen 6 | 0.5d | 2019-09-30 13:00 | 2019-09-30 17:00 | 93FS+2d | 20d | 0d | Andreas Auswertung | 4h | 450 |
| 95 | 1.5.1.7.8 | Nutzerakzeptanzumfrage auswerten 6 | 0.5d | 2019-10-02 08:00 | 2019-10-02 12:00 | 94FS+1d | 20d |  | Andreas Auswertung | 4h | 450 |
| 96 | 1.5.1.7.9 | Performanceziele überprüfen 6 | 0.5d | 2019-09-26 13:00 | 2019-09-26 17:00 | 93 | 23.5d |  | Ina Integration | 4h | 375 |
| 97 | 1.5.1.7.10 | Refinement 7 | 0.5d | 2019-09-30 08:00 | 2019-09-30 12:00 | 88SS+5d | 22d |  | Gerrit Peitz; Leon König; Luca Siekmann; Lukas Schmidt | 14h | 1,512.5 |
| 98 | 1.5.1.7.11 | Betriebshandbuch erstellen 7 | 1d | 2019-10-02 13:00 | 2019-10-04 12:00 | 89 | 19d |  | Gerrit Peitz; Leon König; Robin Behrendt | 12h | 1,375 |
| 99 | 1.5.1.7.12 | Sprint Review & Retrospektive 7 | 0.5d | 2019-10-04 13:00 | 2019-10-04 17:00 | 88SS+8.5d | 18.5d |  | Gerrit Peitz; Leon König; Lukas Schmidt; Robin Behrendt | 14h | 1,687.5 |
| 100 | 1.5.2 | **Finalisierungsphase** | 7.5d | 2019-10-07 08:00 | 2019-10-16 12:00 | 87 | 18.5d | 0d |  | 74h | 7,925 |
| 101 | 1.5.2.1 | Test durchführen 10 | 1d | 2019-10-07 08:00 | 2019-10-07 17:00 | 91 | 18.5d | 0d | Theo Test; Leon Kuß | 12h | 1,200 |
| 102 | 1.5.2.2 | Fehler beheben 10 | 1d | 2019-10-08 08:00 | 2019-10-08 17:00 | 101 | 18.5d | 0d | Leon König | 8h | 800 |
| 103 | 1.5.2.3 | Software installieren 10 | 0.5d | 2019-10-09 08:00 | 2019-10-09 12:00 | 102 | 18.5d | 0d | Ina Integration | 4h | 375 |
| 104 | 1.5.2.4 | Nutzerakzeptanzumfrage durchführen 10 | 0.5d | 2019-10-11 13:00 | 2019-10-11 17:00 | 103FS+2d | 18.5d | 0d | Andreas Auswertung | 4h | 450 |
| 105 | 1.5.2.5 | Nutzerakzeptanzumfrage auswerten 10 | 0.5d | 2019-10-16 08:00 | 2019-10-16 12:00 | 104FS+2d | 18.5d |  | Andreas Auswertung | 4h | 450 |
| 106 | 1.5.2.6 | Performanceziele überprüfen 10 | 0.5d | 2019-10-09 13:00 | 2019-10-09 17:00 | 103 | 23d |  | Ina Integration | 4h | 375 |
| 107 | 1.5.2.7 | Schulungskonzept erarbeiten | 5d | 2019-10-07 08:00 | 2019-10-11 17:00 | 87 | 21d |  | Tobias Training | 38h | 4,275 |
| 108 | 1.6 | Schulung durchführen | 10d | 2019-10-17 13:00 | 2019-11-01 12:00 | 100FS+1d | 18.5d |  |  |  |  |

Notes:
- 88: Feste Dauer
- 89: Feste Einheiten
- 90: Feste Arbeit
- 91: Feste Arbeit
- 92: Feste Arbeit
- 93: Feste Einheiten
- 94: Feste Arbeit
- 95: Feste Arbeit
- 96: Feste Arbeit
- 97: Feste Dauer
- 98: Feste Einheiten
- 99: Feste Dauer
- 101: Feste Arbeit
- 102: Feste Arbeit
- 103: Feste Einheiten
- 104: Feste Arbeit
- 105: Feste Arbeit
- 106: Feste Arbeit
- 107: Feste Arbeit
